# ProyectoUala

Schedule from MS Project, 2025-09-25 to 2026-09-29, costs in $, A marks actual dates.

## Calendars

- Estándar: Mon-Fri 09:00-13:00, 15:00-19:00; Sat-Sun off.

## Resources

| Resource | Rate |
| --- | --- |
| Analista Funcional | 15 |
| Diseñador UX/UI | 12 |
| Desarrollador Backend | 12 |
| Desarrollador Frontend | 12 |
| QA Tester (Control de Calidad) | 10 |
| Especialista en Infraestructura / DevOps | 10 |
| Documentador / Asistente Administrativo | 13 |
| Lider de proyecto | 27 |
| Product Owner | 20 |
| Scrum Master | 12 |
| Especialista Financiero | 21 |
| Analista de Riesgos | 21 |
| Oficina de Proyectos (PMO) | 20 |
| Lider Técnico | 18 |
| Analista de Datos | 17 |
| Comité de Seguimiento | 20 |
| Comité Directivo | 20 |
| Equipo de Comunicaciones | 15 |
| Computadora | 600 |
| Oficina |  |
| Impuestos |  |
| Viaticos |  |
| Servicios |  |
| Licencia de Software | 216 |
| Servidores | 288 |
| Prestamo banco- capital |  |
| Prestamo banco- intereses |  |
| Computadoras Compradas |  |
| Licencia de software compradas |  |

## Schedule

| ID | WBS | Task | Type | Duration | Start | Finish | Predecessors | Complete | Remaining | Baseline start | Baseline finish | Baseline duration | Baseline 1 start | Baseline 1 finish | Total slack | Constraint | Resources | Work | Actual work | Cost | Baseline cost | Actual cost |
| --- | --- | --- | --- | --- | --- | --- | --- | --- | --- | --- | --- | --- | --- | --- | --- | --- | --- | --- | --- | --- | --- | --- |
| 1 | 1 | **Proyecto Expansion Uala** |  | 264d | 2025-09-25 A | 2026-09-29 |  | 40% | 157.71d | 2025-09-25 | 2027-02-04 | 356d | 2025-09-25 | 2027-02-04 | 0d |  |  | 8521.73h | 2147.87h | 130,782.89 | 109,534 | 40,046.47 |
| 2 | 1.1 | **Fase 1 – Inicio del Proyecto** |  | 34d | 2025-09-25 A | 2025-11-11 A |  | 100% |  | 2025-09-25 | 2025-11-10 | 33d | 2025-09-25 | 2025-11-11 |  |  |  | 296h | 296h | 7,916 | 6,940 | 7,416 |
| 3 | 1.1.1 | **Acta de constitución del proyecto** |  | 10d | 2025-09-25 A | 2025-10-08 A |  | 100% |  | 2025-09-25 | 2025-10-08 | 10d | 2025-09-25 | 2025-10-08 |  |  |  | 80h | 80h | 2,836 | 2,436 | 2,336 |
| 4 | 1.1.1.1 | **INICIO_PREPARACION_PROYECTO** |  | 10d | 2025-09-25 A | 2025-10-08 A |  | 100% |  | 2025-09-25 | 2025-10-08 | 10d | 2025-09-25 | 2025-10-08 |  |  |  | 80h | 80h | 2,836 | 2,436 | 2,336 |
| 5 | 1.1.1.1.1 | Identificación de stakeholders |  | 3d | 2025-09-25 A | 2025-09-29 A |  | 100% |  | 2025-09-25 | 2025-09-29 | 3d | 2025-09-25 | 2025-09-29 |  | finish no earlier than 2025-09-29 | Lider de proyecto; Oficina [0.1%]; Viaticos [0.1%] | 24h | 24h | 1,148 | 1,148 | 648 |
| 6 | 1.1.1.1.2 | Elaboración de caso de negocio |  | 4d | 2025-09-30 A | 2025-10-03 A | 5 | 100% |  | 2025-09-30 | 2025-10-03 | 4d | 2025-09-30 | 2025-10-03 |  | finish no earlier than 2025-10-03 | Product Owner | 32h | 32h | 640 | 640 | 640 |
| 7 | 1.1.1.1.3 | Definición preliminar del alcance |  | 3d | 2025-10-06 A | 2025-10-08 A | 6 | 100% |  | 2025-10-06 | 2025-10-08 | 3d | 2025-10-06 | 2025-10-08 |  |  | Lider de proyecto | 24h | 24h | 648 | 648 | 648 |
| 8 | 1.1.1.1.4 | Hito 1 - Inversor A 40k | milestone | 0d | 2025-09-25 A | 2025-09-25 A |  | 100% |  | 2025-09-25 | 2025-09-25 | 0d | 2025-09-25 | 2025-09-25 |  | finish no earlier than 2025-09-25 | Impuestos |  |  | 400 |  | 400 |
| 9 | 1.1.2 | **Documento de alcance preliminar, criterios de éxito** |  | 11d | 2025-10-09 A | 2025-10-23 A | 3 | 100% |  | 2025-10-09 | 2025-10-23 | 11d | 2025-10-09 | 2025-10-23 |  |  |  | 88h | 88h | 2,232 | 2,232 | 2,232 |
| 10 | 1.1.2.1 | **PLANIFICACION_PRELIMINAR** |  | 11d | 2025-10-09 A | 2025-10-23 A |  | 100% |  | 2025-10-09 | 2025-10-23 | 11d | 2025-10-09 | 2025-10-23 |  |  |  | 88h | 88h | 2,232 | 2,232 | 2,232 |
| 11 | 1.1.2.1.1 | Plan preliminar de alto nivel |  | 5d | 2025-10-09 A | 2025-10-15 A | 7 | 100% |  | 2025-10-09 | 2025-10-15 | 5d | 2025-10-09 | 2025-10-15 |  |  | Lider de proyecto | 40h | 40h | 1,080 | 1,080 | 1,080 |
| 12 | 1.1.2.1.2 | Análisis regulatorio inicial |  | 3d | 2025-10-16 A | 2025-10-20 A | 11 | 100% |  | 2025-10-16 | 2025-10-20 | 3d | 2025-10-16 | 2025-10-20 |  |  | Especialista Financiero | 24h | 24h | 504 | 504 | 504 |
| 13 | 1.1.2.1.3 | Definición de objetivos estratégicos |  | 3d | 2025-10-21 A | 2025-10-23 A | 11, 12 | 100% |  | 2025-10-21 | 2025-10-23 | 3d | 2025-10-21 | 2025-10-23 |  |  | Lider de proyecto | 24h | 24h | 648 | 648 | 648 |
| 14 | 1.1.3 | **Registro de requerimientos iniciales** |  | 5d | 2025-10-24 A | 2025-10-30 A | 9 | 100% |  | 2025-10-24 | 2025-10-30 | 5d | 2025-10-24 | 2025-10-30 |  |  |  | 56h | 56h | 1,096 | 1,096 | 1,096 |
| 15 | 1.1.3.1 | **EJECUCION_CONSULTA_STAKEHOLDERS** |  | 5d | 2025-10-24 A | 2025-10-30 A |  | 100% |  | 2025-10-24 | 2025-10-30 | 5d | 2025-10-24 | 2025-10-30 |  |  |  | 56h | 56h | 1,096 | 1,096 | 1,096 |
| 16 | 1.1.3.1.1 | Reuniones con stakeholders |  | 3d | 2025-10-24 A | 2025-10-28 A | 13 | 100% |  | 2025-10-24 | 2025-10-28 | 3d | 2025-10-24 | 2025-10-28 |  |  | Lider de proyecto; Viaticos [0.1%] | 24h | 24h | 648 | 648 | 648 |
| 17 | 1.1.3.1.2 | Recopilación de expectativas |  | 2d | 2025-10-29 A | 2025-10-30 A | 16 | 100% |  | 2025-10-29 | 2025-10-30 | 2d | 2025-10-29 | 2025-10-30 |  |  | Analista Funcional [50%]; Documentador / Asistente Administrativo | 32h | 32h | 448 | 448 | 448 |
| 18 | 1.1.4 | **Informe de factibilidad** |  | 7d | 2025-10-31 A | 2025-11-10 A | 14 | 100% |  | 2025-10-31 | 2025-11-10 | 7d | 2025-10-31 | 2025-11-10 |  |  |  | 56h | 56h | 1,176 | 1,176 | 1,176 |
| 19 | 1.1.4.1 | **CONTROL_VIABILIDAD_RIESGOS** |  | 7d | 2025-10-31 A | 2025-11-10 A |  | 100% |  | 2025-10-31 | 2025-11-10 | 7d | 2025-10-31 | 2025-11-10 |  |  |  | 56h | 56h | 1,176 | 1,176 | 1,176 |
| 20 | 1.1.4.1.1 | Validación de la viabilidad |  | 4d | 2025-10-31 A | 2025-11-05 A | 17 | 100% |  | 2025-10-31 | 2025-11-05 | 4d | 2025-10-31 | 2025-11-05 |  |  | Analista de Riesgos | 32h | 32h | 672 | 672 | 672 |
| 21 | 1.1.4.1.2 | Análisis de riesgos preliminares |  | 3d | 2025-11-06 A | 2025-11-10 A | 20 | 100% |  | 2025-11-06 | 2025-11-10 | 3d | 2025-11-06 | 2025-11-10 |  |  | Analista de Riesgos | 24h | 24h | 504 | 504 | 504 |
| 22 | 1.1.5 | **Aprobación inicial del proyecto** |  | 2d | 2025-11-10 A | 2025-11-11 A | 18 | 100% |  | 2025-11-10 | 2025-11-10 | 0d | 2025-11-10 | 2025-11-11 |  |  |  | 16h | 16h | 576 |  | 576 |
| 23 | 1.1.5.1 | **CIERRE_APROBACION_INICIAL** |  | 2d | 2025-11-10 A | 2025-11-11 A |  | 100% |  | 2025-11-10 | 2025-11-10 | 0d | 2025-11-10 | 2025-11-10 |  |  |  | 16h | 16h | 376 |  | 376 |
| 24 | 1.1.5.1.1 | Presentación y aprobación formal del inicio del proyecto |  | 1d | 2025-11-10 A | 2025-11-11 A | 21 | 100% |  | 2025-11-10 | 2025-11-10 | 0d | 2025-11-10 | 2025-11-10 |  | finish no earlier than 2025-11-11 | Lider de proyecto; Product Owner; Oficina [0.1%]; Viaticos [0.1%] | 16h | 16h | 376 |  | 376 |
| 25 | 1.1.5.2 | Hito - Validación de Alcance y Aprobación de Inicio | milestone | 0d | 2025-11-10 A | 2025-11-10 A |  | 100% |  | 2025-11-10 | 2025-11-10 | 0d | 2025-11-10 | 2025-11-10 |  | finish no earlier than 2025-11-10 |  |  |  |  |  |  |
| 26 | 1.1.5.3 | Hito 2 - Cierre de Planificación Detallada y Validación Técnica Inversor B 20k | milestone | 0d | 2025-11-11 A | 2025-11-11 A |  | 100% |  | 2025-11-10 | 2025-11-11 | 1d? | 2025-11-10 | 2025-11-11 |  | finish no earlier than 2025-11-11 | Impuestos [0.1%] |  |  | 200 |  | 200 |

Notes:
- 8: ~Financiacion planificación y arranque del desarrollo. / 40.000$ Inyeccion de capital de inversor A
- 25: Se completa la planificación inicial, se valida el alcance preliminar del proyecto y se aprueba formalmente el Acta de Constitución. Este hito confirma que el proyecto es viable y cuenta con los lineamientos estratégicos aprobados, lo que habilita la primera inyección de capital destinada al arranque operativo.
- 26: Hito Inversor B 20k...

| ID | WBS | Task | Type | Duration | Start | Finish | Predecessors | Complete | Remaining | Baseline start | Baseline finish | Baseline duration | Baseline 1 start | Baseline 1 finish | Total slack | Constraint | Resources | Work | Actual work | Cost | Baseline cost | Actual cost | Comentarios adicionales |
| --- | --- | --- | --- | --- | --- | --- | --- | --- | --- | --- | --- | --- | --- | --- | --- | --- | --- | --- | --- | --- | --- | --- | --- |
| 27 | 1.2 | **Fase 2 – Planificación** |  | 63d | 2025-11-12 A | 2026-02-06 A |  | 100% |  | 2025-09-25 | 2026-02-12 | 101d | 2025-09-25 | 2026-02-12 |  |  |  | 718h | 718h | 13,790 | 21,202 | 12,290 |  |
| 28 | 1.2.1 | **Lista definitiva de stakeholders** |  | 5d | 2025-11-12 A | 2025-11-18 A |  | 100% |  | 2025-11-11 | 2025-11-17 | 5d | 2025-11-11 | 2025-11-17 |  |  |  | 40h | 40h | 1,912 | 912 | 1,412 |  |
| 29 | 1.2.1.1 | **CONFIRMACIÓN INICIAL DEL PLAN** |  | 5d | 2025-11-12 A | 2025-11-18 A |  | 100% |  | 2025-11-11 | 2025-11-17 | 5d | 2025-11-11 | 2025-11-17 |  |  |  | 40h | 40h | 1,912 | 912 | 1,412 |  |
| 30 | 1.2.1.1.1 | Confirmación de stakeholders |  | 2d | 2025-11-12 A | 2025-11-13 A | 22 | 100% |  | 2025-11-11 | 2025-11-12 | 2d | 2025-11-11 | 2025-11-12 |  |  | Lider de proyecto; Oficina [0.1%] | 16h | 16h | 1,432 | 432 | 932 |  |
| 31 | 1.2.1.1.2 | Alcance del plan detallado |  | 3d | 2025-11-14 A | 2025-11-18 A | 30 | 100% |  | 2025-11-13 | 2025-11-17 | 3d | 2025-11-13 | 2025-11-17 |  |  | Product Owner | 24h | 24h | 480 | 480 | 480 |  |
| 32 | 1.2.2 | **Plan de proyecto integral** |  | 31d | 2025-11-19 A | 2025-12-31 A | 28 | 100% |  | 2025-11-18 | 2026-01-13 | 41d | 2025-11-18 | 2026-01-13 |  |  |  | 432h | 432h | 7,084 | 15,928 | 6,084 |  |
| 33 | 1.2.2.1 | **ELABORACIÓN DE PLAN INTEGRAL** |  | 31d | 2025-11-19 A | 2025-12-31 A |  | 100% |  | 2025-11-18 | 2026-01-13 | 41d | 2025-11-18 | 2026-01-13 |  |  |  | 432h | 432h | 7,084 | 15,928 | 6,084 |  |
| 34 | 1.2.2.1.1 | Elaboración de EDT |  | 7d | 2025-11-19 A | 2025-11-27 A | 31 | 100% |  | 2025-11-18 | 2025-12-01 | 10d | 2025-11-18 | 2025-12-01 |  |  | Lider de proyecto; Lider Técnico; Oficina [0.1%] | 112h | 112h | 1,480 | 4,560 | 980 | Project Manager |
| 35 | 1.2.2.1.2 | Cronograma |  | 4d | 2025-11-28 A | 2025-12-03 A | 34 | 100% |  | 2025-12-02 | 2025-12-08 | 5d | 2025-12-02 | 2025-12-08 |  |  | Scrum Master; Lider de proyecto [50%]; Oficina de Proyectos (PMO); Viaticos [0.1%] | 96h | 96h | 2,388 | 2,360 | 1,888 |  |
| 36 | 1.2.2.1.3 | Presupuesto |  | 4d | 2025-12-05 A | 2025-12-10 A | 35 | 100% |  | 2025-12-09 | 2025-12-16 | 6d | 2025-12-09 | 2025-12-16 |  |  | Especialista Financiero; Oficina de Proyectos (PMO) | 64h | 64h | 656 | 1,968 | 656 |  |
| 37 | 1.2.2.1.4 | Plan de comunicaciones |  | 10d | 2025-12-11 A | 2025-12-24 A | 36 | 100% |  | 2025-12-17 | 2025-12-30 | 10d | 2025-12-17 | 2025-12-30 |  |  | Lider de proyecto | 80h | 80h | 800 | 3,520 | 800 |  |
| 38 | 1.2.2.1.5 | Plan de calidad y RRHH |  | 5d | 2025-12-25 A | 2025-12-31 A | 37 | 100% |  | 2025-12-31 | 2026-01-13 | 10d | 2025-12-31 | 2026-01-13 |  |  | Lider de proyecto; Analista de Datos | 80h | 80h | 1,760 | 3,520 | 1,760 |  |
| 39 | 1.2.3 | **Requisitos funcionales y técnicos validados** |  | 12d | 2026-01-08 A | 2026-01-23 A | 32 | 100% |  | 2026-01-14 | 2026-01-29 | 12d | 2026-01-14 | 2026-01-29 |  |  |  | 54h | 54h | 690 | 690 | 690 |  |
| 40 | 1.2.3.1 | **DEFINICIÓN DE REQUISITOS** |  | 12d | 2026-01-08 A | 2026-01-23 A |  | 100% |  | 2026-01-14 | 2026-01-29 | 12d | 2026-01-14 | 2026-01-29 |  |  |  | 54h | 54h | 690 | 690 | 690 |  |
| 41 | 1.2.3.1.1 | Talleres de definición de requisitos |  | 7d | 2026-01-08 A | 2026-01-16 A | 38 | 100% |  | 2026-01-14 | 2026-01-22 | 7d | 2026-01-14 | 2026-01-22 |  |  | Analista Funcional [25%] | 14h | 14h | 210 | 210 | 210 |  |
| 42 | 1.2.3.1.2 | Acuerdos sobre hitos y roles |  | 5d | 2026-01-19 A | 2026-01-23 A | 41 | 100% |  | 2026-01-23 | 2026-01-29 | 5d | 2026-01-23 | 2026-01-29 |  |  | Scrum Master | 40h | 40h | 480 | 480 | 480 |  |
| 43 | 1.2.4 | **Plan de gestión ajustado** |  | 7d | 2026-01-26 A | 2026-02-03 A |  | 100% |  | 2026-01-30 | 2026-02-09 | 7d | 2026-01-30 | 2026-02-09 |  |  |  | 168h | 168h | 3,024 | 3,024 | 3,024 |  |
| 44 | 1.2.4.1 | **REVISIÓN Y VALIDACIÓN DEL PLAN** |  | 7d | 2026-01-26 A | 2026-02-03 A |  | 100% |  | 2026-01-30 | 2026-02-09 | 7d | 2026-01-30 | 2026-02-09 |  |  |  | 168h | 168h | 3,024 | 3,024 | 3,024 |  |
| 45 | 1.2.4.1.1 | Revisión y validación de consistencia del plan (tiempos, costos, alcance) |  | 7d | 2026-01-26 A | 2026-02-03 A | 42 | 100% |  | 2026-01-30 | 2026-02-09 | 7d | 2026-01-30 | 2026-02-09 |  |  | Oficina de Proyectos (PMO); Especialista Financiero; Documentador / Asistente Administrativo | 168h | 168h | 3,024 | 3,024 | 3,024 |  |
| 46 | 1.2.5 | **Plan del proyecto firmado** |  | 3d | 2026-02-04 A | 2026-02-06 A |  | 100% |  | 2025-09-25 | 2026-02-12 | 101d | 2025-09-25 | 2026-02-12 |  |  |  | 24h | 24h | 1,080 | 648 | 1,080 |  |
| 47 | 1.2.5.1 | **APROBACIÓN DEL PLAN** |  | 3d | 2026-02-04 A | 2026-02-06 A |  | 100% |  | 2025-09-25 | 2026-02-12 | 101d | 2025-09-25 | 2026-02-12 |  |  |  | 24h | 24h | 1,080 | 648 | 1,080 |  |
| 48 | 1.2.5.1.1 | Aprobación del plan de proyecto por stakeholders |  | 3d | 2026-02-04 A | 2026-02-06 A | 45 | 100% |  | 2026-02-10 | 2026-02-12 | 3d | 2026-02-10 | 2026-02-12 |  | finish no earlier than 2026-02-06 | Lider de proyecto | 24h | 24h | 1,080 | 648 | 1,080 |  |
| 49 | 1.2.5.1.2 | Hito 3 - Plan Aprobado y Preparación para Desarrollo del MVP Inversor C 35k | milestone | 0d | 2026-02-06 A | 2026-02-06 A | 48 | 100% |  | 2025-09-25 | 2025-09-25 | 0d | 2025-09-25 | 2025-09-25 |  | finish no earlier than 2026-02-06 |  |  |  |  |  |  |  |
| 50 | 1.3 | **Fase 3 – Ejecución** |  | 155.87d | 2026-02-09 A | 2026-09-14 |  | 31% | 108.15d | 2025-09-25 | 2026-11-17 | 299d | 2025-09-25 | 2026-11-17 | 11.13d |  |  | 6495.73h | 1013.87h | 85,045.69 | 64,928 | 18,120.47 |  |
| 51 | 1.3.1 | **Kick-off de ejecución** |  | 5d | 2026-02-09 A | 2026-02-13 A |  | 100% |  | 2026-02-13 | 2026-02-23 | 7d | 2026-02-13 | 2026-02-23 |  |  |  | 80h | 80h | 2,060 | 2,184 | 1,560 |  |
| 52 | 1.3.1.1 | **PREPARACIÓN DE LA EJECUCIÓN** |  | 5d | 2026-02-09 A | 2026-02-13 A |  | 100% |  | 2026-02-13 | 2026-02-23 | 7d | 2026-02-13 | 2026-02-23 |  |  |  | 80h | 80h | 2,060 | 2,184 | 1,560 |  |
| 53 | 1.3.1.1.1 | Asignación de recursos y equipos para ejecutar el plan |  | 5d | 2026-02-09 A | 2026-02-13 A | 48 | 100% |  | 2026-02-13 | 2026-02-23 | 7d | 2026-02-13 | 2026-02-23 |  |  | Lider de proyecto; Scrum Master; Oficina [0.1%] | 80h | 80h | 2,060 | 2,184 | 1,560 |  |

Notes:
- 49: 35.000$ inyeccion inversor C...

| ID | WBS | Task | Type | Duration | Start | Finish | Predecessors | Complete | Remaining | Baseline start | Baseline finish | Baseline duration | Baseline 1 start | Baseline 1 finish | Total slack | Free slack | Constraint | Resources | Work | Actual work | Cost | Baseline cost | Actual cost |
| --- | --- | --- | --- | --- | --- | --- | --- | --- | --- | --- | --- | --- | --- | --- | --- | --- | --- | --- | --- | --- | --- | --- | --- |
| 54 | 1.3.2 | **Roadmap de ejecución** |  | 47d | 2026-02-16 A | 2026-04-21 A |  | 100% |  | 2026-02-24 | 2026-05-06 | 52d | 2026-02-24 | 2026-05-06 |  |  |  |  | 392h | 392h | 5,280 | 5,640 | 5,280 |
| 55 | 1.3.2.1 | **PLANIFICACIÓN DE SPRINTS** |  | 47d | 2026-02-16 A | 2026-04-21 A |  | 100% |  | 2026-02-24 | 2026-05-06 | 52d | 2026-02-24 | 2026-05-06 |  |  |  |  | 392h | 392h | 5,280 | 5,640 | 5,280 |
| 56 | 1.3.2.1.1 | Planificación detallada de sprints |  | 7d | 2026-02-16 A | 2026-02-24 A | 53 | 100% |  | 2026-02-24 | 2026-03-04 | 7d | 2026-02-24 | 2026-03-04 |  |  |  | Lider Técnico; Scrum Master | 112h | 112h | 1,680 | 1,680 | 1,680 |
| 57 | 1.3.2.1.2 | Análisis técnico-funcional del proyecto |  | 10d | 2026-02-24 A | 2026-03-10 A | 56 | 100% |  | 2026-03-04 | 2026-03-25 | 15d | 2026-03-04 | 2026-03-25 |  |  | finish no earlier than 2026-03-10 | Lider Técnico [50%]; Analista Funcional [50%] | 40h | 40h | 720 | 1,080 | 720 |
| 58 | 1.3.2.1.3 | Iteraciones y entregas parciales |  | 30d | 2026-03-11 A | 2026-04-21 A | 57 | 100% |  | 2026-03-26 | 2026-05-06 | 30d | 2026-03-26 | 2026-05-06 |  |  |  | Scrum Master | 240h | 240h | 2,880 | 2,880 | 2,880 |
| 59 | 1.3.3 | **MVP, versión beta** |  | 103.87d | 2026-04-22 A | 2026-09-14 |  | 11% | 92.66d | 2026-03-26 | 2026-10-09 | 142d | 2026-03-26 | 2026-10-09 | 11.13d |  |  |  | 5615.73h | 248.53h | 48,645.69 | 21,560 | 4,661.8 |
| 60 | 1.3.3.1 | **DESARROLLO E INTEGRACIÓN** |  | 103.87d | 2026-04-22 A | 2026-09-14 |  | 11% | 92.66d | 2026-03-26 | 2026-10-09 | 142d | 2026-03-26 | 2026-10-09 | 11.13d |  |  |  | 5615.73h | 248.53h | 48,645.69 | 21,560 | 4,661.8 |
| 61 | 1.3.3.1.1 | Diseño UX/UI |  | 20d | 2026-04-22 A | 2026-06-16 | 58 | 99% | 0d | 2026-03-26 | 2026-04-22 | 20d | 2026-03-26 | 2026-04-22 | 0d |  |  | Diseñador UX/UI; Computadora | 160h | 160h | 3,925.8 | 2,920 | 3,925.8 |
| 62 | 1.3.3.1.2 | Compra de recursos de oficina esenciales para el desarrollo de las actividades |  | 1d | 2026-06-17 | 2026-06-17 | 61 |  |  |  |  |  |  |  | 74d |  |  | Licencia de Software [500%]; Computadora [500%] |  |  | 14,610 |  |  |
| 63 | 1.3.3.1.2 | Desarrollo de Software (Backend) |  | 67.2d | 2026-05-20 A | 2026-09-14 | 61 | 5% | 63.87d | 2026-04-23 | 2026-06-24 | 45d | 2026-04-23 | 2026-06-24 | 11.13d | 0d |  | Desarrollador Backend; Computadoras Compradas; Licencia de software compradas | 1541.87h | 26.67h | 7,176 | 5,320 | 368 |
| 64 | 1.3.3.1.3 | Desarrollo de Software (Frontend) |  | 70d | 2026-05-20 A | 2026-08-25 | 63SS | 5% | 66.67d | 2026-06-25 | 2026-09-16 | 60d | 2026-06-25 | 2026-09-16 | 25d | 0d |  | Desarrollador Frontend; Computadoras Compradas; Licencia de software compradas | 1661.87h | 61.87h | 7,728 | 6,760 | 368 |
| 65 | 1.3.3.1.4 | Pruebas de integración |  | 10d | 2026-07-01 | 2026-07-14 | 64SS+30d |  |  | 2026-09-17 | 2026-09-30 | 10d | 2026-09-17 | 2026-09-30 | 0d |  |  | QA Tester (Control de Calidad); Licencia de software compradas; Computadoras Compradas | 240h |  | 920 | 1,800 |  |
| 66 | 1.3.3.1.5 | Pruebas piloto |  | 40d | 2026-07-15 | 2026-09-08 | 65 |  |  | 2026-10-01 | 2026-10-09 | 7d | 2026-10-01 | 2026-10-09 | 0d |  |  | QA Tester (Control de Calidad) [50%]; Desarrollador Backend; Computadoras Compradas; Licencia de software compradas | 720h |  | 2,024 | 560 |  |
| 67 | 1.3.3.1.6 | Integración con bancos |  | 35d | 2026-07-15 | 2026-09-01 | 66SS |  |  | 2026-06-25 | 2026-07-22 | 20d | 2026-06-25 | 2026-07-22 | 0d |  |  | Especialista en Infraestructura / DevOps; QA Tester (Control de Calidad) [50%]; Servidores; Desarrollador Backend; Computadoras Compradas; Licencia de software compradas | 1260h |  | 9,305.89 | 4,200 |  |
| 68 | 1.3.3.1.7 | Campañas de marketing |  | 4d | 2026-07-15 | 2026-07-20 | 67SS |  |  | 2026-10-09 | 2026-10-09 | 0d | 2026-10-09 | 2026-10-09 | 51d | 0d |  | Servidores; Equipo de Comunicaciones | 32h |  | 2,956 |  |  |
| 69 | 1.3.3.1.8 | Hito - Campaña de marketing activa | milestone | 0d | 2026-07-20 | 2026-07-20 | 68 |  |  | 2026-10-09 | 2026-10-09 | 0d | 2026-10-09 | 2026-10-09 | 51d |  |  |  |  |  |  |  |  |
| 70 | 1.3.4 | **Informes de control de calidad y métricas** |  | 22d | 2026-04-22 A | 2026-05-21 A |  | 100% |  | 2026-05-07 | 2026-10-27 | 124d | 2026-05-07 | 2026-10-27 |  |  |  |  | 272h | 272h | 6,208 | 7,904 | 6,208 |
| 71 | 1.3.4.1 | **MONITOREO Y CONTROL** |  | 22d | 2026-04-22 A | 2026-05-21 A |  | 100% |  | 2026-05-07 | 2026-10-27 | 124d | 2026-05-07 | 2026-10-27 |  |  |  |  | 272h | 272h | 6,208 | 7,904 | 6,208 |
| 72 | 1.3.4.1.1 | Seguimiento de KPIs |  | 7d | 2026-04-22 A | 2026-04-30 A | 68 | 100% |  | 2026-05-07 | 2026-05-15 | 7d | 2026-05-07 | 2026-05-15 |  |  |  | Lider de proyecto; Oficina de Proyectos (PMO); Servidores | 112h | 112h | 3,348 | 2,632 | 3,348 |
| 73 | 1.3.4.1.2 | Control de calidad |  | 5d | 2026-05-01 A | 2026-05-07 A | 72 | 100% |  | 2026-10-01 | 2026-10-07 | 5d | 2026-10-01 | 2026-10-07 |  |  |  | QA Tester (Control de Calidad) | 40h | 40h | 460 | 400 | 460 |
| 74 | 1.3.4.1.3 | Informes de avance |  | 10d | 2026-05-08 A | 2026-05-21 A | 73 | 100% |  | 2026-10-08 | 2026-10-27 | 14d | 2026-10-08 | 2026-10-27 |  |  |  | Oficina de Proyectos (PMO) [50%]; Product Owner | 120h | 120h | 2,400 | 4,872 | 2,400 |
| 75 | 1.3.5 | **Beta aprobada y lista para lanzamiento** |  | 12d | 2026-05-22 A | 2026-06-08 |  | 11% | 10.67d | 2025-09-25 | 2026-11-17 | 299d | 2025-09-25 | 2026-11-17 | 56d | 0d |  |  | 136h | 21.33h | 22,852 | 27,640 | 410.67 |
| 76 | 1.3.5.1 | **VALIDACIÓN Y CIERRE DE LA FASE** |  | 12d | 2026-05-22 A | 2026-06-08 |  | 11% | 10.67d | 2025-09-25 | 2026-11-17 | 299d | 2025-09-25 | 2026-11-17 | 56d |  |  |  | 136h | 21.33h | 22,852 | 27,640 | 410.67 |
| 77 | 1.3.5.1.1 | Validación de entregables parciales |  | 5d | 2026-05-22 A | 2026-05-28 | 74 | 27% | 3.67d | 2026-10-28 | 2026-11-03 | 5d | 2026-10-28 | 2026-11-03 | 56d | 0d |  | Lider de proyecto; QA Tester (Control de Calidad) | 80h | 21.33h | 1,540 | 1,480 | 410.67 |
| 78 | 1.3.5.1.2 | Ajustes hasta aprobación |  | 7d | 2026-05-29 | 2026-06-08 | 77 |  |  | 2026-11-04 | 2026-11-17 | 10d | 2026-11-04 | 2026-11-17 | 56d | 0d |  | Lider de proyecto | 56h |  | 1,512 | 2,160 |  |
| 79 | 1.3.5.1.3 | Hito Financiero - Acceso al Crédito Operativo / Préstamo | milestone | 0d | 2026-06-08 | 2026-06-08 | 78 |  |  | 2025-09-25 | 2025-09-25 | 0d | 2025-09-25 | 2025-09-25 | 56d |  |  |  |  |  | 19,800 | 24,000 |  |

Notes:
- 79: Préstamo bancario (20%) USD 16500 Aplica sobre planificación y desarrollo. Total a devolver: USD 19800 ...

| ID | WBS | Task | Type | Duration | Start | Finish | Predecessors | Baseline start | Baseline finish | Baseline duration | Baseline 1 start | Baseline 1 finish | Total slack | Free slack | Resources | Work | Cost | Baseline cost |
| --- | --- | --- | --- | --- | --- | --- | --- | --- | --- | --- | --- | --- | --- | --- | --- | --- | --- | --- |
| 80 | 1.4 | **Fase 4 – Monitoreo y Control** |  | 25d | 2026-06-08 | 2026-07-13 | 75 | 2026-11-18 | 2027-01-13 | 41d | 2026-11-18 | 2027-01-13 | 56d |  |  | 328h | 5,495.2 | 8,592 |
| 81 | 1.4.1 | **Plan de métricas** |  | 6d | 2026-06-08 | 2026-06-16 |  | 2026-11-18 | 2026-11-26 | 7d | 2026-11-18 | 2026-11-26 | 56d |  |  | 120h | 1,177.6 | 2,072 |
| 82 | 1.4.1.1 | **DEFINICIÓN DE MÉTRICAS** |  | 6d | 2026-06-08 | 2026-06-16 |  | 2026-11-18 | 2026-11-26 | 7d | 2026-11-18 | 2026-11-26 | 56d |  |  | 120h | 1,177.6 | 2,072 |
| 83 | 1.4.1.1.1 | Establecer criterios y métricas de control |  | 6d | 2026-06-08 | 2026-06-16 | 78 | 2026-11-18 | 2026-11-26 | 7d | 2026-11-18 | 2026-11-26 | 56d | 0d | Analista de Datos; Oficina de Proyectos (PMO); Analista Funcional [50%]; QA Tester (Control de Calidad) | 120h | 1,177.6 | 2,072 |
| 84 | 1.4.2 | **Estrategia de control de cambios** |  | 3d | 2026-06-17 | 2026-06-19 |  | 2026-11-27 | 2026-12-03 | 5d | 2026-11-27 | 2026-12-03 | 56d |  |  | 24h | 648 | 1,480 |
| 85 | 1.4.2.1 | **ESTRATEGIA DE CONTROL** |  | 3d | 2026-06-17 | 2026-06-19 |  | 2026-11-27 | 2026-12-03 | 5d | 2026-11-27 | 2026-12-03 | 56d |  |  | 24h | 648 | 1,480 |
| 86 | 1.4.2.1.1 | Plan de seguimiento y control de cambios |  | 3d | 2026-06-17 | 2026-06-19 | 83 | 2026-11-27 | 2026-12-03 | 5d | 2026-11-27 | 2026-12-03 | 56d | 0d | Lider de proyecto | 24h | 648 | 1,480 |
| 87 | 1.4.3 | **Reportes de desempeño** |  | 16d | 2026-06-22 | 2026-07-13 |  | 2026-12-04 | 2026-12-25 | 16d | 2026-12-04 | 2026-12-25 | 56d |  |  | 160h | 2,709.6 | 2,544 |
| 88 | 1.4.3.1 | **RECOPILACIÓN DE DESEMPEÑO** |  | 16d | 2026-06-22 | 2026-07-13 |  | 2026-12-04 | 2026-12-25 | 16d | 2026-12-04 | 2026-12-25 | 56d |  |  | 160h | 2,709.6 | 2,544 |
| 89 | 1.4.3.1.1 | Recopilación de métricas |  | 7d | 2026-06-22 | 2026-06-30 | 86 | 2026-12-04 | 2026-12-14 | 7d | 2026-12-04 | 2026-12-14 | 56d | 0d | QA Tester (Control de Calidad) | 56h | 644 | 560 |
| 90 | 1.4.3.1.2 | Auditorías |  | 5d | 2026-07-01 | 2026-07-07 | 89 | 2026-12-15 | 2026-12-21 | 5d | 2026-12-15 | 2026-12-21 | 56d | 0d | Oficina de Proyectos (PMO) | 40h | 800 | 800 |
| 91 | 1.4.3.1.3 | Evaluaciones de desempeño |  | 4d | 2026-07-08 | 2026-07-13 | 90 | 2026-12-22 | 2026-12-25 | 4d | 2026-12-22 | 2026-12-25 | 56d |  | Oficina de Proyectos (PMO); Analista de Datos | 64h | 1,265.6 | 1,184 |
| 92 | 1.4.4 | **Informe consolidado de control** |  | 3d | 2026-06-08 | 2026-06-11 |  | 2026-12-28 | 2027-01-08 | 10d | 2026-12-28 | 2027-01-08 | 58d |  |  | 24h | 960 | 2,016 |
| 93 | 1.4.4.1 | **CONSOLIDACIÓN DE RESULTADO** |  | 3d | 2026-06-08 | 2026-06-11 |  | 2027-01-11 | 2027-01-13 | 3d | 2027-01-11 | 2027-01-13 | 58d | 0d |  | 24h | 480 | 480 |
| 94 | 1.4.4.1.1 | Aprobación de las métricas y resultados intermedios |  | 3d | 2026-06-09 | 2026-06-11 |  | 2027-01-11 | 2027-01-13 | 3d | 2027-01-11 | 2027-01-13 | 58d | 0d | Comité de Seguimiento | 24h | 480 | 480 |
| 95 | 1.4.4.1.2 | Hito - Informe de metricas y resultados | milestone | 0d | 2026-06-08 | 2026-06-08 |  | 2027-01-11 | 2027-01-13 | 3d | 2027-01-11 | 2027-01-13 | 61d |  |  |  |  | 480 |
| 96 | 1.5 | **Fase 5 – Cierre** |  | 78d | 2026-06-11 | 2026-09-29 | 93 | 2027-01-13 | 2027-02-04 | 16d | 2027-01-13 | 2027-02-04 | 0d |  |  | 368h | 12,668 | 4,896 |
| 97 | 1.5.1 | **Lista de entregables finales** |  | 2d | 2026-06-12 | 2026-06-15 |  | 2027-01-14 | 2027-01-15 | 2d | 2027-01-14 | 2027-01-15 | 71d |  |  | 16h | 432 | 432 |
| 98 | 1.5.1.1 | **IDENTIFICACIÓN DE ENTREGABLES** |  | 2d | 2026-06-12 | 2026-06-15 |  | 2027-01-14 | 2027-01-15 | 2d | 2027-01-14 | 2027-01-15 | 71d |  |  | 16h | 432 | 432 |
| 99 | 1.5.1.1.1 | Identificar entregables finales |  | 2d | 2026-06-12 | 2026-06-15 | 94 | 2027-01-14 | 2027-01-15 | 2d | 2027-01-14 | 2027-01-15 | 71d | 0d | Lider de proyecto | 16h | 432 | 432 |
| 100 | 1.5.2 | **Plan de cierre** |  | 2d | 2026-06-16 | 2026-06-17 |  | 2027-01-18 | 2027-01-20 | 3d | 2027-01-18 | 2027-01-20 | 71d |  |  | 16h | 104 | 312 |
| 101 | 1.5.2.1 | **PLAN DE CIERRE** |  | 2d | 2026-06-16 | 2026-06-17 |  | 2027-01-18 | 2027-01-20 | 3d | 2027-01-18 | 2027-01-20 | 71d |  |  | 16h | 104 | 312 |
| 102 | 1.5.2.1.1 | Planificar actividades de cierre (documentación, liberación de recursos, presentación de resultados) |  | 2d | 2026-06-16 | 2026-06-17 | 99 | 2027-01-18 | 2027-01-20 | 3d | 2027-01-18 | 2027-01-20 | 71d | 0d | Documentador / Asistente Administrativo | 16h | 104 | 312 |
| 103 | 1.5.3 | **App entregada oficialmente** |  | 65d | 2026-06-11 | 2026-09-10 |  | 2027-01-13 | 2027-01-26 | 9d | 2027-01-13 | 2027-01-26 | 13d |  |  | 80h | 2,520 | 720 |
| 104 | 1.5.3.1 | **PRESENTACIÓN Y ENTREGA** |  | 61d | 2026-06-18 | 2026-09-10 |  | 2027-01-21 | 2027-01-26 | 4d | 2027-01-21 | 2027-01-26 | 13d |  |  | 80h | 2,520 | 720 |
| 105 | 1.5.3.1.1 | Presentación final a stakeholders |  | 3d | 2026-06-18 | 2026-06-22 | 102 | 2027-01-21 | 2027-01-21 | 1d | 2027-01-21 | 2027-01-21 | 71d |  | Comité Directivo | 24h | 880 | 200 |
| 106 | 1.5.3.1.2 | Entrega de la app |  | 3d | 2026-09-02 | 2026-09-04 | 67 | 2027-01-22 | 2027-01-22 | 1d | 2027-01-22 | 2027-01-22 | 0d |  | Equipo de Comunicaciones | 24h | 600 | 120 |
| 107 | 1.5.3.1.3 | Liberación de contratos y recursos |  | 4d | 2026-09-07 | 2026-09-10 | 106 | 2027-01-25 | 2027-01-26 | 2d | 2027-01-25 | 2027-01-26 | 0d |  | Comité Directivo | 32h | 1,040 | 400 |
| 108 | 1.5.3.2 | Hito - Entrega Oficial de la Aplicación y Liberación Final de Recursos | milestone | 0d | 2026-06-11 | 2026-06-11 |  | 2027-01-13 | 2027-01-13 | 0d | 2027-01-13 | 2027-01-13 | 78d |  |  |  |  |  |

Notes:
- 95: Etapa que marca el final de la fase de monitoreo y control ...
- 108: La aplicación se entrega oficialmente al cliente/usuarios clave y se completan los procesos de aceptación. Este hito certifica que los objetivos principales del proyecto fueron alcanzados y habilita la liberación de los últimos pagos a proveedores, cierre

| ID | WBS | Task | Duration | Start | Finish | Predecessors | Complete | Remaining | Baseline start | Baseline finish | Baseline duration | Baseline 1 start | Baseline 1 finish | Total slack | Resources | Work | Actual work | Cost | Baseline cost | Actual cost |
| --- | --- | --- | --- | --- | --- | --- | --- | --- | --- | --- | --- | --- | --- | --- | --- | --- | --- | --- | --- | --- |
| 109 | 1.5.4 | **Informe de cumplimiento** | 8d | 2026-09-11 | 2026-09-22 |  |  |  | 2027-01-27 | 2027-01-29 | 3d | 2027-01-27 | 2027-01-29 | 0d |  | 96h |  | 2,792 | 1,128 |  |
| 110 | 1.5.4.1 | **VERIFICACIÓN DE CUMPLIMIENTO** | 8d | 2026-09-11 | 2026-09-22 |  |  |  | 2027-01-27 | 2027-01-29 | 3d | 2027-01-27 | 2027-01-29 | 0d |  | 96h |  | 2,792 | 1,128 |  |
| 111 | 1.5.4.1.1 | Verificar cumplimiento de objetivos y métricas | 8d | 2026-09-11 | 2026-09-22 | 107 |  |  | 2027-01-27 | 2027-01-29 | 3d | 2027-01-27 | 2027-01-29 | 0d | Lider de proyecto [50%]; Oficina de Proyectos (PMO) | 96h |  | 2,792 | 1,128 |  |
| 112 | 1.5.5 | **Informe de cierre y registro de lecciones aprendidas** | 5d | 2026-09-23 | 2026-09-29 |  |  |  | 2027-02-01 | 2027-02-04 | 4d | 2027-02-01 | 2027-02-04 | 0d |  | 160h |  | 6,820 | 2,304 |  |
| 113 | 1.5.5.1 | **LECCIONES APRENDIDAS Y DOCUMENTACIÓN** | 5d | 2026-09-23 | 2026-09-29 |  |  |  | 2027-02-01 | 2027-02-04 | 4d | 2027-02-01 | 2027-02-04 | 0d |  | 160h |  | 6,820 | 2,304 |  |
| 114 | 1.5.5.1.1 | Sesión de lecciones aprendidas | 5d | 2026-09-23 | 2026-09-29 | 111 |  |  | 2027-02-01 | 2027-02-02 | 2d | 2027-02-01 | 2027-02-02 | 0d | Lider de proyecto [50%]; Lider Técnico; Oficina de Proyectos (PMO) [50%]; Product Owner; Scrum Master | 160h |  | 6,820 | 1,552 |  |
| 115 | 1.6 | **“Planes de contingencia y control de riesgos”** | 105d | 2026-04-22 A | 2026-09-15 |  | 40% | 63d | 2026-05-07 | 2027-01-15 | 182d | 2026-05-07 | 2027-01-15 | 10d |  | 316h | 120h | 5,868 | 2,976 | 2,220 |
| 116 | 1.6.1 | Plan de coordinación con partners externos | 5d | 2026-09-08 | 2026-09-15 | 66 |  |  | 2026-10-12 | 2026-10-14 | 3d | 2026-10-12 | 2026-10-14 | 10d | Desarrollador Backend; Analista Funcional [50%]; Lider Técnico | 80h |  | 1,272 | 528 |  |
| 117 | 1.6.2 | Plan de comunicación entre áreas | 5d | 2026-04-22 A | 2026-04-28 A | 55 | 100% |  | 2026-05-07 | 2026-05-08 | 2d | 2026-05-07 | 2026-05-08 |  | Product Owner; Scrum Master | 80h | 80h | 1,280 | 512 | 1,280 |
| 118 | 1.6.3 | Gestión de carga de trabajo | 5d | 2026-05-08 A | 2026-05-14 A | 74SS | 100% |  | 2026-10-08 | 2026-10-13 | 4d | 2026-10-08 | 2026-10-13 |  | Lider de proyecto [50%]; Oficina de Proyectos (PMO) [50%] | 40h | 40h | 940 | 752 | 940 |
| 119 | 1.6.4 | Plan de cumplimiento normativo | 5d | 2026-06-09 | 2026-06-15 | 75 |  |  | 2026-11-18 | 2026-11-19 | 2d | 2026-11-18 | 2026-11-19 | 76d | Documentador / Asistente Administrativo; Product Owner | 80h |  | 1,320 | 528 |  |
| 120 | 1.6.5 | Control financiero preventivo | 5d | 2026-06-12 | 2026-06-18 | 93 |  |  | 2027-01-14 | 2027-01-15 | 2d | 2027-01-14 | 2027-01-15 | 73d | Especialista Financiero; Oficina de Proyectos (PMO) [50%] | 36h |  | 1,056 | 656 |  |

Notes:
- 116: Mitigación Riesgo #1: Coordinación temprana con equipos externos que nos provean de servicios o APIs que necesitemos. Tener un cronograma conjunto y definir responsables y tiempos de respuesta ante incidentes es crucial para saber a quién abordar ante posibles erorres en la integración y no demorar en el proyecto.
- 117: Mitigación Riesgo #2: Implementar una difusión de avances a través de avisos programados a través de canales internos definidos, por ejemplo, mails.
- 118: Mitigación Riesgo #3 redistribución de recursos y tareas críticas para evitar sobrecarga y mantener la productividad. Emplear un control de carga horaria para evitar cuellos de botella.
- 119: Mitigación Riesgo #4: Revisión de compliance regulatorio antes del deploy. Se realiza una validación legal y regulatoria previa al despliegue final (CNBV/UIF).
- 120: Mitigación Riesgo #5: Control presupuestario y revisión financiera. Verificación de costos y recursos asignados antes del cierre de la fase. Implementar un fondo de reserva para contingencias menores y reportes financieros por fase.
